# Centrale PAC 18 MW - Granges-Paccot (20.133)

Schedule from MS Project XML, 2026-10-26 to 2027-10-08.

## Calendars

- Standard: Mon-Fri 08:00-12:00, 13:00-17:00; Sat-Sun off.

## Resources

| Resource |
| --- |
| A DEFINIR |
| ANSERMOT |
| ANTIGLIO |
| BILFINGER |
| CALORIFUGEAGE |
| DESPRAZ |
| ENTRETEC |
| EXERGO |
| GE |
| GETECH-IEG |
| GETECH-INFRA |
| GETECH-TABLEAU |
| HALG |
| LEVAGE |
| RIEDO |
| WETTSTEIN |

## Schedule

| ID | WBS | Task | Duration | Start | Finish | Predecessors | Resources |
| --- | --- | --- | --- | --- | --- | --- | --- |
| 1 | 1 | **P0 - Gros œuvre, enveloppe et préparation** |  | 2026-10-26 | 2027-01-08 |  |  |
| 2 | 1.1 | Achèvement béton, étanchéité et enveloppe | 40d | 2026-10-26 | 2026-12-18 |  | ANTIGLIO |
| 3 | 1.2 | Socles armoires et coffrets (100 mm) | 10d | 2026-10-26 | 2026-11-06 | 2SS | ANTIGLIO |
| 4 | 1.3 | Réservations et percements | 15d | 2026-10-26 | 2026-11-13 |  | ANTIGLIO |
| 5 | 1.4 | Mise en place du socle préfabriqué PAC 1 | 5d | 2026-10-26 | 2026-10-30 | 2SS | WETTSTEIN |
| 6 | 1.5 | Mise en place du socle préfabriqué PAC 2 | 5d | 2026-10-26 | 2026-10-30 | 2SS | WETTSTEIN |
| 7 | 1.6 | Fenêtres | 15d | 2026-12-21 | 2027-01-08 | 2 | ANSERMOT |
| 8 | 2 | **P1 - Manutention et mise en place des équipements lourds** |  | 2026-10-26 | 2027-06-04 |  |  |
| 9 | 2.1 | Montage de l'accumulateur chaud | 60d | 2026-10-26 | 2027-01-15 |  | BILFINGER |
| 10 | 2.2 | Montage de la PAC 1 (NH3) dans le local | 75d | 2026-11-02 | 2027-02-12 | 5 | WETTSTEIN |
| 11 | 2.3 | Centrale froid n°1 (hydraulique) | 25d | 2026-12-21 | 2027-01-22 | 2 | ENTRETEC |
| 12 | 2.4 | Mise en place des vases d'expansion (7 x 5'000 L) | 10d | 2026-12-21 | 2027-01-01 | 2 | LEVAGE |
| 13 | 2.5 | Montage de la PAC 2 (NH3) dans le local | 75d | 2027-02-15 | 2027-05-28 | 6, 10 | WETTSTEIN |
| 14 | 2.6 | Fermeture de l'accès de manutention | 5d | 2027-05-31 | 2027-06-04 | 13 | ANTIGLIO |
| 15 | 3 | **P2 - Réseaux primaires** |  | 2026-10-26 | 2027-06-04 |  |  |
| 16 | 3.1 | Tuyauterie hydraulique chaud (sections 00 à 06) | 75d | 2026-10-26 | 2027-02-05 | 2SS | ENTRETEC |
| 17 | 3.2 | Pompes et collecteur de circulation des locaux PAC | 50d | 2026-10-26 | 2027-01-01 | 16SS | ENTRETEC |
| 18 | 3.3 | Installations sanitaires | 15d | 2026-10-26 | 2026-11-13 |  | RIEDO |
| 19 | 3.4 | Tuyauterie CO2 jusqu'aux echangeurs froid | 60d | 2026-12-21 | 2027-03-12 | 11SS, 16SS | DESPRAZ |
| 20 | 3.5 | Chemins de câbles et câblage IEG | 80d | 2026-12-21 | 2027-04-09 | 19SS | GETECH-IEG |
| 21 | 3.6 | Serrurerie : garde-corps, échelles, caillebotis | 20d | 2026-12-21 | 2027-01-15 | 2 | ANSERMOT |
| 22 | 3.7 | Raccordement hydraulique des vases d'expansion | 15d | 2027-01-04 | 2027-01-22 | 12, 16SS | ENTRETEC |
| 23 | 3.8 | Ventilation hygiénique - réseaux (section 42) | 60d | 2027-02-08 | 2027-04-30 | 2SS, 16, 18 | HALG |
| 24 | 3.9 | Ventilation commande, WC, vestiaire (section 41) | 15d | 2027-02-08 | 2027-02-26 | 23SS | HALG |
| 25 | 3.10 | Ventilation de sécurité CO2/NH3 - réseaux (section 43) | 50d | 2027-02-08 | 2027-04-16 | 23SS, 16, 18 | HALG |
| 26 | 3.11 | Froid process hydraulique et armoires de refroidissement des locaux | 60d | 2027-03-15 | 2027-06-04 | 19, 11 | ENTRETEC |

Notes:
- 1: Béton, étanchéité, socles et massifs, réservations. Quasiment terminé.
- 2: [T-ANT-010] Lot : ANTIGLIO / Systeme : GC / Locaux : * / Statut : en_cours
- 3: [T-ANT-025] Lot : ANTIGLIO / Systeme : GC / Locaux : CENT.N-2.21, CENT.N-2.04, CENT.N-2.19 / Statut : a_confirmer / Les armoires 1, 2, 3, 14 et 15 reposent sur socle 100 mm (liste des armoires). / RAISONS DES LIENS : / <- T-ANT-010 (DD) : Même entreprise
- 4: [T-ANT-030] Lot : ANTIGLIO / Systeme : GC / Locaux : * / Statut : a_confirmer
- 5: [T-ANT-021] Lot : WETTSTEIN / Systeme : PAC-1 / Locaux : CENT.N-2.07 / Statut : a_confirmer / Déplacement et mise en place par Wettstein et le maître d'ouvrage (MO, 20.10.2026). / RAISONS DES LIENS : / <- T-ANT-010 (DD) : Local disponible ; le socle préfabriqué ne demande pas de cure
- 6: [T-ANT-022] Lot : WETTSTEIN / Systeme : PAC-2 / Locaux : CENT.N-2.10 / Statut : a_confirmer / Déplacement et mise en place par Wettstein et le maître d'ouvrage (MO, 20.10.2026). / RAISONS DES LIENS : / <- T-ANT-010 (DD) : Local disponible ; le socle préfabriqué ne demande pas de cure
- 7: [T-ANS-010] Lot : ANSERMOT / Systeme : MEN / Locaux : CENT.N-2.21 / Statut : non_adjuge / Fenêtres du bureau / poste de commande (MO, 20.10.2026). / RAISONS DES LIENS : / <- T-ANT-010 (FD) : Supports et tableaux terminés
- 8: Descente et pose des PAC 1 à 4 et de l'accumulateur. Jalon pivot : tant que les machines ne sont pas en place, l'itinéraire de manutention doit rester libre.
- 9: [T-BIL-010] Lot : BILFINGER / Systeme : ACC / Locaux : CENT.N-2.24 / Statut : en_cours / Accumulateur chaud 5'000 kW, 2 x 2.5 MW. PLAN N-2 : diametre 8 m (9 m une fois isole), HAUTEUR 19 m. Il traverse donc plusieurs niveaux et se monte sur place : ce n'est pas un colis de manutention.
- 10: [T-WET-010] Lot : WETTSTEIN / Systeme : PAC-1 / Locaux : CENT.N-2.07 / Statut : a_confirmer / 3,5 mois par local (MO, 20.10.2026). Il ne s'agit pas d'une machine livrée d'un bloc mais d'un montage complet sur place : les composants entrent pièce par pièce, ce qui lève la contrainte de gabarit à l'entrée. En revanche le local reste occupé par Wettstein pendant toute la durée du montage. / RAISONS DES LIENS : / <- T-ANT-021 (FD) : Socle préfabriqué en place dans le local
- 11: [T-DES-005] Lot : ENTRETEC / Systeme : FROID-CO2 / Locaux : CENT.N-2.09 / Statut : a_confirmer / Entretec réalise le froid dans ce local. L'échange froid CO2/eau se fait dans le local d'introduction CO2 N-2.05, côté Despraz (MO, 20.10.2026). / RAISONS DES LIENS : / <- T-ANT-010 (FD) : Locaux disponibles
- 12: [T-LEV-010] Lot : LEVAGE / Systeme : EXPANSION / Locaux : CENT.N-2.19 / Statut : non_adjuge / Vases fournis par SPIROTEC, mis en place par une entreprise de levage, raccordés par Entretec (MO, 20.10.2026). Entreprise de levage à désigner. Les vases arrivent assemblés : c'est pour eux que la question de gabarit reste posée (Q-02). Levage à organiser (MO, 20.10.2026). / RAISONS DES LIENS : / <- T-ANT-010 (FD) : Local hydraulique chaud disponible
- 13: [T-WET-020] Lot : WETTSTEIN / Systeme : PAC-2 / Locaux : CENT.N-2.10 / Statut : a_confirmer / Deuxième local monté. Wettstein passe directement du local PAC 1 au local PAC 2, sans recouvrement (MO, 20.10.2026) — les raccordements de la PAC 1 se font donc pendant ce montage. / RAISONS DES LIENS : / <- T-ANT-022 (FD) : Socle préfabriqué en place dans le local / <- T-WET-010 (FD) : Le MO construit d'abord le local PAC 1, puis le local PAC 2 (20.10.2026)
- 14: [T-ANT-040] Lot : ANTIGLIO / Systeme : GC / Locaux : CENT.N-2.25, CENT.N-2.26 / Statut : a_confirmer / Voir Q-01 : l'itinéraire réel reste à confirmer. / RAISONS DES LIENS : / <- T-WET-020 (FD) : Dernier colis lourd rentré
- 15: Ordre de passage dans les volumes partagés : le plus encombrant et le moins déformable d'abord. Ventilation, puis hydraulique, puis CO2, puis chemins de câbles.
- 16: [T-ENT-010] Lot : ENTRETEC / Systeme : HYD-CHAUD / Locaux : CENT.N-1.02, CENT.N-1.04, CENT.N-2.19, CENT.N-2.24 / Statut : a_confirmer / PN16, pression statique 11 bars. Le réseau part du local hydraulique chaud, traverse les galeries techniques de N-1 et rejoint l'accumulateur (MO, 20.10.2026). Il croise donc la ventilation de sécurité, qui emprunte les mêmes galeries. Circulateurs Grundfos NBG de 484 kg et vannes RTK de 401 kg à manutentionner dans les locaux. Au niveau N-1, le chaud emprunte la circulation N-1.04 ; la galerie N-1.03 porte le froid. Quelques soupapes en local technique N-1.02 (MO, 20.10.2026). / RAISONS DES LIENS : / <- T-ANT-010 (DD) : Locaux livrés par le gros œuvre au fur et à mesure
- 17: [T-ENT-030] Lot : ENTRETEC / Systeme : HYD-CHAUD / Locaux : CENT.N-2.18 / Statut : a_confirmer / Pompes et collecteur faisant circuler l'eau dans les locaux PAC (MO, 20.10.2026). / RAISONS DES LIENS : / <- T-ENT-010 (DD) : Même entreprise, réseaux coordonnés
- 18: [T-RIE-010] Lot : RIEDO / Systeme : SAN / Locaux : CENT.N-1.03, CENT.N-1.04, CENT.N-2.22, CENT.N-2.23 / Statut : a_confirmer / Lot localisé en N-2, mais la tuyauterie sanitaire transite par les galeries techniques de N-1 et passe avant la ventilation (MO, 20.10.2026).
- 19: [T-DES-010] Lot : DESPRAZ / Systeme : FROID-CO2 / Locaux : CENT.N-1.02, CENT.N-1.03, CENT.N-2.05 / Statut : a_confirmer / Limite de prestation : Despraz pose les conduites CO2 jusqu'aux echangeurs froid. L'hydraulique en aval est chez Entretec. Local d'introduction CO2 : N-2.05. PN6, 3 bars. Le CO2 emprunte la galerie N-1.03 et dessert quelques soupapes en N-1.02 (MO, 20.10.2026). / RAISONS DES LIENS : / <- T-DES-005 (DD) : Même entreprise, réseau tiré depuis les centrales froid / <- T-ENT-010 (DD) : Passe après les gros diamètres hydrauliques dans les volumes partagés
- 20: [T-GET-030] Lot : GETECH-IEG / Systeme : IEG / Locaux : CENT.N+0.01, CENT.N+0.02, CENT.N-1.01, CENT.N-1.02, CENT.N-1.03, CENT.N-1.04, CENT.N-1.05, CENT.N-1.06, CENT.N-1.07, CENT.N-2.01, CENT.N-2.02, CENT.N-2.03, CENT.N-2.04, CENT.N-2.05, CENT.N-2.06, CENT.N-2.07, CENT.N-2.08, CENT.N-2.09, CENT.N-2.10, CENT.N-2.12, CENT.N-2.13, CENT.N-2.14, CENT.N-2.15, CENT.N-2.16, CENT.N-2.17, CENT.N-2.18, CENT.N-2.19, CENT.N-2.20, CENT.N-2.21, CENT.N-2.22, CENT.N-2.23, CENT.N-2.24, CENT.N-2.25, CENT.N-2.26 / Statut : a_confirmer / Groupe E Tech IEG câble tout ce qui n'est pas du rail d'énergie. 905 segments de chemin de câbles, 615 accessoires, 647 luminaires. IEG intervient globalement dans tous les locaux (MO, 20.10.2026), ce qui le met en concurrence avec les autres lots partout où l'on passe chacun son tour. IEG ne passe pas par les galeries techniques mais par en dessous (MO, 20.10.2026) : son cheminement n'entre donc pas en concurrence avec l'hydraulique et la ventilation. / RAISONS DES LIENS : / <- T-DES-010 (DD) : Dernier des réseaux : le chemin de câbles est le plus adaptable, il contourne
- 21: [T-ANS-020] Lot : ANSERMOT / Systeme : SER / Locaux : CENT.N+0.01, CENT.N+0.02, CENT.N-2.02, CENT.N-2.17, CENT.N-2.18, CENT.N-2.20 / Statut : non_adjuge / À scinder : garde-corps au plus tôt pour la sécurité des autres lots, caillebotis après les réseaux qu'ils surplombent. Les sorties N+0.01 et N+0.02 ne reçoivent que de l'éclairage et de la serrurerie (MO, 20.10.2026). / RAISONS DES LIENS : / <- T-ANT-010 (FD) : Supports béton disponibles
- 22: [T-ENT-020] Lot : ENTRETEC / Systeme : EXPANSION / Locaux : CENT.N-2.19 / Statut : a_confirmer / Section 07 du synoptique : 7 vases de 5'000 L, 0.5 bar, DN20/40/65. / RAISONS DES LIENS : / <- T-LEV-010 (FD) : Vases en place avant raccordement / <- T-ENT-010 (DD) : Même local, même entreprise
- 23: [T-HAL-010] Lot : HALG / Systeme : VENT-HYG / Locaux : CENT.N-1.01, CENT.N-1.02, CENT.N-1.03, CENT.N-1.04, CENT.N-1.06, CENT.N-1.07, CENT.N-2.01, CENT.N-2.03, CENT.N-2.04, CENT.N-2.05, CENT.N-2.07, CENT.N-2.08, CENT.N-2.09, CENT.N-2.10, CENT.N-2.18, CENT.N-2.19, CENT.N-2.21, CENT.N-2.22, CENT.N-2.23 / Statut : a_confirmer / Premier des réseaux : le plus encombrant et le moins déformable. Débits : MT 1'240, hydraulique chaud 890, TGBT 790 m3/h. Comprend le free-cooling du local MT. Locaux des PAC 3 et 4 retirés : équipements reportés. Hälg intervient globalement dans tous les locaux (MO, 20.10.2026), ce qui le met en concurrence avec les autres lots partout où l'on passe chacun son tour. / RAISONS DES LIENS : / <- T-ANT-010 (DD) : Locaux livrés par le gros œuvre au fur et à mesure / <- T-ENT-010 (FD) : Dans les galeries techniques, l'hydraulique et le sanitaire passent avant la ventilation (MO, 20.10.2026). / <- T-RIE-010 (FD) : Dans les galeries techniques, l'hydraulique et le sanitaire passent avant la ventilation (MO, 20.10.2026).
- 24: [T-HAL-020] Lot : HALG / Systeme : VENT-WC / Locaux : CENT.N-2.21, CENT.N-2.22, CENT.N-2.23, CENT.N-1.07 / Statut : a_confirmer / 75 m3/h vestiaire et sanitaires. Lot localisé, large marge de calage. / RAISONS DES LIENS : / <- T-HAL-010 (DD) : Même entreprise
- 25: [T-HAL-030] Lot : HALG / Systeme : VENT-SECU / Locaux : CENT.N-1.02, CENT.N-1.03, CENT.N-2.05, CENT.N-2.07, CENT.N-2.10 / Statut : a_confirmer / SYSTÈME DE SÉCURITÉ. Cheminée d'extraction de secours dédiée, gaines galvanisées étanchéité classe D, clapets coupe-feu. Extraction fuite NH3 5'500 m3/h et fuite CO2 12'100 m3/h par local. Schéma encore en pré-exécution (16.10.2026). Locaux des PAC 3 et 4 retirés : équipements reportés. / RAISONS DES LIENS : / <- T-HAL-010 (DD) : Même entreprise, réseaux coordonnés / <- T-ENT-010 (FD) : Dans les galeries techniques, l'hydraulique et le sanitaire passent avant la ventilation (MO, 20.10.2026). / <- T-RIE-010 (FD) : Dans les galeries techniques, l'hydraulique et le sanitaire passent avant la ventilation (MO, 20.10.2026).
- 26: [T-ENT-090] Lot : ENTRETEC / Systeme : FROID-HYD / Locaux : CENT.N-1.03, CENT.N-1.04, CENT.N-2.03, CENT.N-2.04, CENT.N-2.08, CENT.N-2.18, CENT.N-2.19 / Statut : a_confirmer / Circuit hydraulique froid 16/21 degrés en aval des échangeurs. MT 97 kW, variateurs/commande 70 kW, locaux PAC 55 kW chacun, pompage 25 kW, hydraulique chaud 15 kW, TGBT 10 kW. Réalisable dès que le réseau CO2 et la centrale froid n°1 sont en place, sans attendre l'échangeur de la PAC 2 (MO, 20.10.2026) : c'est une branche distincte du froid process. Conditionne la mise en charge nominale des variateurs. Le local MT est refroidi par l'air depuis N-2.03, et non par un piquage hydraulique direct (MO, 20.10.2026). / RAISONS DES LIENS : / <- T-DES-010 (FD) : Réseau CO2 posé jusqu'aux échangeurs / <- T-DES-005 (FD) : Centrale froid n°1 en service

| ID | WBS | Task | Duration | Start | Finish | Predecessors | Constraint | Resources |
| --- | --- | --- | --- | --- | --- | --- | --- | --- |
| 27 | 4 | **P3 - Électricité de puissance** |  | 2026-10-26 | 2027-05-21 |  |  |  |
| 28 | 4.1 | Raccordement extérieur (MT réseau et conduites CAD) | 60d | 2026-10-26 | 2027-01-15 |  |  | GE |
| 29 | 4.2 | STAP - génie civil, équipements et armoire de commande | 100d | 2026-10-26 | 2027-03-12 |  |  | A DEFINIR |
| 30 | 4.3 | Cellules et transformateurs MT/BT, rails d'énergie | 40d | 2027-02-01 | 2027-03-26 |  |  | GETECH-INFRA |
| 31 | 4.4 | Pose des tableaux TGBT | 40d | 2027-03-29 | 2027-05-21 | 30 |  | GETECH-TABLEAU |
| 32 | 4.5 | Armoires variateurs 1 et 2 | 30d | 2027-03-29 | 2027-05-07 | 31SS |  | EXERGO |
| 33 | 4.6 | Armoires et coffrets de commande (15 unités) | 20d | 2027-03-29 | 2027-04-23 | 3, 32SS |  | GETECH-TABLEAU |
| 34 | 5 | **P4 - Raccordements aux machines** |  | 2026-12-07 | 2027-07-02 |  |  |  |
| 35 | 5.1 | Raccordement des sondes de l'accumulateur | 5d | 2026-12-07 | 2026-12-11 | 49 |  | GE |
| 36 | 5.2 | Raccordement hydraulique sur accumulateur | 10d | 2026-12-07 | 2026-12-18 | 49 |  | ENTRETEC |
| 37 | 5.3 | Départ CAD et départ ZI (étape 1) | 20d | 2027-02-08 | 2027-03-05 | 16 |  | ENTRETEC |
| 38 | 5.4 | Raccordement hydraulique chaud PAC 1 | 20d | 2027-02-15 | 2027-03-12 | 10, 16 |  | ENTRETEC |
| 39 | 5.5 | Raccordement des chaufferies mobiles gaz (2 x 2.5 MW) | 15d | 2027-03-08 | 2027-03-26 | 37 |  | ENTRETEC |
| 40 | 5.6 | Échangeur froid et CO2 PAC 1 | 20d | 2027-03-15 | 2027-04-09 | 38SS, 19 |  | DESPRAZ |
| 41 | 5.7 | Détection incendie et détection gaz NH3 / CO2 | 20d | 2027-04-12 | 2027-05-07 | 20 |  | GETECH-IEG |
| 42 | 5.8 | Portes intérieures | 60d | 2027-04-12 | 2027-07-02 | 20 |  | ANSERMOT |
| 43 | 5.9 | Automates et régulation MCR (API, RIO, HMI, Scada) | 50d | 2027-04-26 | 2027-07-02 | 33 |  | GE |
| 44 | 5.10 | Raccordement des sondes et actionneurs (hors accumulateur) | 40d | 2027-04-26 | 2027-06-18 | 16, 19, 43SS |  | GE |
| 45 | 5.11 | Raccordement hydraulique chaud PAC 2 | 20d | 2027-05-31 | 2027-06-25 | 13, 16 |  | ENTRETEC |
| 46 | 5.12 | Échangeur froid et CO2 PAC 2 | 20d | 2027-05-31 | 2027-06-25 | 45SS, 19 |  | DESPRAZ |
| 47 | 5.13 | Câblage de puissance des PAC | 20d | 2027-05-31 | 2027-06-25 | 20, 32, 13 |  | GETECH-IEG |
| 48 | 6 | **P5 - Épreuves et essais** |  | 2026-11-30 | 2027-08-27 |  |  |  |
| 49 | 6.1 | Épreuve de pression de l'accumulateur | 5d | 2026-11-30 | 2026-12-04 | 9 | start no earlier than 2026-11-30 | BILFINGER |
| 50 | 6.2 | Calorifugeage de l'accumulateur | 30d | 2026-12-14 | 2027-01-22 | 49, 35 |  | BILFINGER |
| 51 | 6.3 | Rinçage et remplissage des réseaux hydrauliques | 10d | 2027-02-08 | 2027-02-19 | 16, 17, 22 |  | ENTRETEC |
| 52 | 6.4 | Épreuve de pression des réseaux hydrauliques | 5d | 2027-02-22 | 2027-02-26 | 51 |  | ENTRETEC |
| 53 | 6.5 | Rebouchages et calfeutrements coupe-feu | 15d | 2027-04-12 | 2027-04-30 | 20 |  | ANTIGLIO |
| 54 | 6.6 | Mise sous tension MT/BT et TGBT | 10d | 2027-05-24 | 2027-06-04 | 30, 31, 28, 23 |  | GETECH-INFRA |
| 55 | 6.7 | Épreuve d'étanchéité des circuits NH3 | 10d | 2027-05-31 | 2027-06-11 | 13 |  | WETTSTEIN |
| 56 | 6.8 | Portes du chemin de manutention | 5d | 2027-05-31 | 2027-06-04 | 13 |  | ANSERMOT |
| 57 | 6.9 | Mise en service et essais de la ventilation de secours et de la détection gaz | 15d | 2027-06-07 | 2027-06-25 | 25, 41, 54, 53 |  | HALG |
| 58 | 6.10 | Calorifugeage des tuyauteries chaud et froid | 50d | 2027-06-21 | 2027-08-27 | 52, 44 |  | CALORIFUGEAGE |
| 59 | 6.11 | Charge en NH3 des PAC 1 et 2 | 5d | 2027-06-28 | 2027-07-02 | 55, 57, 54 |  | WETTSTEIN |
| 60 | 6.12 | Épreuve d'étanchéité du circuit CO2 | 10d | 2027-06-28 | 2027-07-09 | 46, 26 |  | DESPRAZ |
| 61 | 6.13 | Tirage au vide du circuit CO2 | 5d | 2027-07-12 | 2027-07-16 | 60 |  | DESPRAZ |
| 62 | 6.14 | Charge en CO2 | 5d | 2027-07-19 | 2027-07-23 | 61, 57, 54 |  | DESPRAZ |

Notes:
- 27: MT/BT, transformateurs, TGBT, armoires variateurs et commande. Mené en parallèle de P2 car conditionné par les délais de livraison.
- 28: [T-GE-020] Lot : GE / Systeme : RACC-EXT / Locaux : CENT.N+0.03 / Statut : a_confirmer / À coordonner avec la surface bituminée (3'352 m2) et la rampe, qui sert aussi d'itinéraire de manutention. La surface bituminée N+0.03 n'est pas encore relevée : affectation déduite, à reprendre.
- 29: [T-STA-010] Lot : A DEFINIR / Systeme : STAP / Locaux : STAP / Statut : HORS_PERIMETRE_CONNU / Le synoptique chaud s'intitule 'Centrale PAC 18MW (STAP et Centrale)' et la liste des armoires comporte une armoire STAP (1200x2000x400, 400/230 V, socle 100 mm, API STAP au concept MCR). La STAP est donc dans le périmètre du projet, mais absente de la maquette architecturale et de la liste des adjudications communiquée. Voir Q-18.
- 30: [T-GET-010] Lot : GETECH-INFRA / Systeme : ELEC-MT / Locaux : CENT.N-2.01 / Statut : a_confirmer / Groupe E Tech INFRA pose les cellules et transformateurs MT/BT, ainsi que les rails d'énergie jusque dans le local TGBT — c'est là que s'arrête sa prestation. Matériel livré dès février 2027 (MO, 20.10.2026).
- 31: [T-GET-020] Lot : GETECH-TABLEAU / Systeme : TGBT / Locaux : CENT.N-2.04 / Statut : a_confirmer / Groupe E Tech TABLEAU pose les TGBT dans le local TGBT. Cellules livrées dès février 2027 (MO, 20.10.2026). / RAISONS DES LIENS : / <- T-GET-010 (FD) : Chacun son tour dans le local TGBT ; les rails d'énergie d'INFRA y aboutissent (ordre à confirmer, Q-25)
- 32: [T-GET-040] Lot : EXERGO / Systeme : TGBT / Locaux : CENT.N-2.08 / Statut : a_confirmer / Tableaux variateurs fournis par Wettstein et Exergo (MO, 20.10.2026). / RAISONS DES LIENS : / <- T-GET-020 (DD) : Même campagne de livraison, à confirmer
- 33: [T-GET-050] Lot : GETECH-TABLEAU / Systeme : MCR / Locaux : CENT.N-2.21, CENT.N-2.19, CENT.N-2.04 / Statut : a_confirmer / Voir data/armoires.json. 5 armoires sur 15 n'ont pas encore de local attribué, dont celle de la ventilation de secours et celle de l'accumulateur. Voir Q-16. Locaux des PAC 3 et 4 retirés : équipements reportés. Les coffrets PAC 3 et 4 (armoires 11 et 12, local N-2.13) sortent du marché. Attribution INFRA / TABLEAU / IEG à confirmer (Q-25). / RAISONS DES LIENS : / <- T-ANT-025 (FD) : Socles de 100 mm coulés / <- T-GET-040 (DD) : Même campagne
- 34: CO2, hydraulique, puissance et régulation sur les PAC et l'accumulateur, dans les locaux.
- 35: [T-GE-010] Lot : GE / Systeme : ACC / Locaux : CENT.N-2.24 / Statut : a_confirmer / RIO 2 - Accu du concept MCR : 6 circuits instrumentés. Les doigts de gant doivent être posés et repérés avant calorifugeage. / RAISONS DES LIENS : / <- T-BIL-020 (FD) : Épreuve réalisée avant instrumentation définitive
- 36: [T-ENT-050] Lot : ENTRETEC / Systeme : ACC / Locaux : CENT.N-2.24 / Statut : a_confirmer / RAISONS DES LIENS : / <- T-BIL-020 (FD) : Épreuve de l'enveloppe avant raccordement des réseaux
- 37: [T-ENT-055] Lot : ENTRETEC / Systeme : HYD-CHAUD / Locaux : CENT.N-2.19 / Statut : a_confirmer / Le synoptique distingue 'Départ ZI 19.119 - Etape 1 / Final' et 'Départ CADFR - Etape 1 / Final'. Le projet est phasé. Voir Q-14. / RAISONS DES LIENS : / <- T-ENT-010 (FD) : Collecteurs réalisés
- 38: [T-ENT-041] Lot : ENTRETEC / Systeme : HYD-CHAUD / Locaux : CENT.N-2.07 / Statut : a_confirmer / Limite de prestation : Wettstein monte la machine dans le local, Entretec vient s'y raccorder. / RAISONS DES LIENS : / <- T-WET-010 (FD) : Wettstein libère le local et passe directement au suivant ; Entretec et Despraz y interviennent ensemble, 4 semaines confondues (MO, 20.10.2026). / <- T-ENT-010 (FD) : Réseau amont réalisé
- 39: [T-ENT-080] Lot : ENTRETEC / Systeme : HYD-CHAUD / Locaux : CENT.N+0.03 / Statut : a_confirmer / LEVIER DE PLANNING : échangeurs PN6/PN25 sur le synoptique chaud. Les chaufferies mobiles permettent d'alimenter le CAD avant que les PAC soient en service, donc de découpler la date de livraison de chaleur de celle de la mise en service des machines. Voir Q-15. La surface bituminée N+0.03 n'est pas encore relevée : affectation déduite, à reprendre. / RAISONS DES LIENS : / <- T-ENT-055 (FD) : Collecteurs de départ disponibles
- 40: [T-DES-016] Lot : DESPRAZ / Systeme : FROID-CO2 / Locaux : CENT.N-2.07 / Statut : a_confirmer / 180 kW par échangeur. Les locaux PAC reçoivent aussi de l'hydraulique chaud et du CO2. / RAISONS DES LIENS : / <- T-ENT-041 (DD) : Entretec et Despraz interviennent en même temps dans le local (MO, 20.10.2026) / <- T-DES-010 (FD) : Réseau CO2 amont réalisé
- 41: [T-GET-070] Lot : GETECH-IEG / Systeme : DI / Locaux : CENT.N-1.01, CENT.N-1.02, CENT.N-1.03, CENT.N-1.04, CENT.N-1.05, CENT.N-1.06, CENT.N-1.07, CENT.N-2.01, CENT.N-2.02, CENT.N-2.03, CENT.N-2.04, CENT.N-2.05, CENT.N-2.06, CENT.N-2.07, CENT.N-2.08, CENT.N-2.09, CENT.N-2.10, CENT.N-2.12, CENT.N-2.13, CENT.N-2.14, CENT.N-2.15, CENT.N-2.16, CENT.N-2.17, CENT.N-2.18, CENT.N-2.19, CENT.N-2.20, CENT.N-2.21, CENT.N-2.22, CENT.N-2.23, CENT.N-2.24, CENT.N-2.25, CENT.N-2.26 / Statut : a_confirmer / À TRANCHER : la détection gaz NH3 et CO2 est-elle dans ce lot, chez Wettstein, ou chez Despraz ? C'est une sécurité des personnes qui pilote la ventilation de secours. Voir Q-05. / RAISONS DES LIENS : / <- T-GET-030 (FD) : Supports de câblage disponibles
- 42: [T-ANS-030] Lot : ANSERMOT / Systeme : MEN / Locaux : CENT.N-1.01, CENT.N-1.05, CENT.N-1.06, CENT.N-1.07, CENT.N-2.01, CENT.N-2.02, CENT.N-2.03, CENT.N-2.04, CENT.N-2.05, CENT.N-2.06, CENT.N-2.07, CENT.N-2.08, CENT.N-2.09, CENT.N-2.10, CENT.N-2.11, CENT.N-2.12, CENT.N-2.13, CENT.N-2.14, CENT.N-2.15, CENT.N-2.16, CENT.N-2.17, CENT.N-2.18, CENT.N-2.19, CENT.N-2.20, CENT.N-2.21, CENT.N-2.22, CENT.N-2.23, CENT.N-2.24, CENT.N-2.25, CENT.N-2.26 / Statut : non_adjuge / Deux jours par porte (MO, 20.10.2026), 30 locaux équipés, soit 60 jours ouvrés. Hypothèse d'une porte par local et d'une seule équipe : à corriger si Ansermot en engage plusieurs, ou si certains locaux reçoivent plus d'une porte. / RAISONS DES LIENS : / <- T-GET-030 (FD) : Réseaux passés : une porte posée tôt est une porte abîmée ou démontée
- 43: [T-GE-030] Lot : GE / Systeme : MCR / Locaux : CENT.N-2.21 / Statut : a_confirmer / Armoires 1 « Master local MCR » et 3 « Réseau IP - Télécom » en N-2.21, selon la liste des armoires. Les locaux N-2.09 et N-2.14 sont des centrales froid, pas des locaux de commande. Concept MCR daté de février 2024, à revalider (Q-17). Groupe E Tech TABLEAU intervient en sous-traitance dans ce local. Groupe E assure la mise en service complète de la centrale (MO, 20.10.2026). / RAISONS DES LIENS : / <- T-GET-050 (FD) : Armoires en place
- 44: [T-GE-040] Lot : GE / Systeme : MCR / Locaux : CENT.N-2.05, CENT.N-2.07, CENT.N-2.09, CENT.N-2.10, CENT.N-2.18, CENT.N-2.19, CENT.N-2.24 / Statut : a_confirmer / Comprend les 4 sondes de température intérieure centrale (rez et galerie) du synoptique chaud. Doit précéder le calorifugeage. / RAISONS DES LIENS : / <- T-ENT-010 (FD) : Tuyauterie posée, doigts de gant disponibles / <- T-DES-010 (FD) : Réseau CO2 posé / <- T-GE-030 (DD) : Même entreprise
- 45: [T-ENT-042] Lot : ENTRETEC / Systeme : HYD-CHAUD / Locaux : CENT.N-2.10 / Statut : a_confirmer / Limite de prestation : Wettstein monte la machine dans le local, Entretec vient s'y raccorder. / RAISONS DES LIENS : / <- T-WET-020 (FD) : Wettstein libère le local et passe directement au suivant ; Entretec et Despraz y interviennent ensemble, 4 semaines confondues (MO, 20.10.2026). / <- T-ENT-010 (FD) : Réseau amont réalisé
- 46: [T-DES-017] Lot : DESPRAZ / Systeme : FROID-CO2 / Locaux : CENT.N-2.10 / Statut : a_confirmer / 180 kW par échangeur. Les locaux PAC reçoivent aussi de l'hydraulique chaud et du CO2. / RAISONS DES LIENS : / <- T-ENT-042 (DD) : Entretec et Despraz interviennent en même temps dans le local (MO, 20.10.2026) / <- T-DES-010 (FD) : Réseau CO2 amont réalisé
- 47: [T-GET-060] Lot : GETECH-IEG / Systeme : IEG / Locaux : CENT.N-2.07, CENT.N-2.10 / Statut : a_confirmer / RAISONS DES LIENS : / <- T-GET-030 (FD) : Chemins de câbles posés / <- T-GET-040 (FD) : Variateurs en place pour tirer aux deux extrémités / <- T-WET-020 (FD) : Machines en place
- 48: Rinçage, épreuves de pression, étanchéité CO2, tirage au vide, charge, mise sous tension.
- 49: [T-BIL-020] Lot : BILFINGER / Systeme : ACC / Locaux : CENT.N-2.24 / Statut : date_ferme / SEULE DATE FERME DU DOSSIER. Sert d'ancrage au calage. / RAISONS DES LIENS : / <- T-BIL-010 (FD) : Enveloppe terminée avant mise sous pression
- 50: [T-CAL-010] Lot : BILFINGER / Systeme : ACC / Locaux : CENT.N-2.24 / Statut : a_confirmer / Réalisé par Bilfinger avec l'accumulateur (MO, 20.10.2026) : ce n'est donc pas un lot à adjuger. Environ 500 m² en hauteur, diamètre passant de 8 à 9 m. / RAISONS DES LIENS : / <- T-BIL-020 (FD) : On n'isole pas avant d'avoir éprouvé : une reprise de fuite impose de déshabiller / <- T-GE-010 (FD) : Sondes et doigts de gant posés, sinon on rouvre l'isolation
- 51: [T-ENT-060] Lot : ENTRETEC / Systeme : HYD-CHAUD / Locaux : CENT.N-2.03, CENT.N-2.04, CENT.N-2.05, CENT.N-2.06, CENT.N-2.07, CENT.N-2.08, CENT.N-2.09, CENT.N-2.10, CENT.N-2.18, CENT.N-2.19, CENT.N-2.24 / Statut : a_confirmer / RÈGLE DURE : rincer AVANT de raccorder définitivement aux échangeurs des PAC. / RAISONS DES LIENS : / <- T-ENT-010 (FD) : Réseau complet / <- T-ENT-030 (FD) : Pompes posées pour assurer la circulation de rinçage / <- T-ENT-020 (FD) : Expansion en service avant mise en eau
- 52: [T-ENT-070] Lot : ENTRETEC / Systeme : HYD-CHAUD / Locaux : CENT.N-2.03, CENT.N-2.04, CENT.N-2.05, CENT.N-2.06, CENT.N-2.07, CENT.N-2.08, CENT.N-2.09, CENT.N-2.10, CENT.N-2.18, CENT.N-2.19, CENT.N-2.24 / Statut : a_confirmer / RAISONS DES LIENS : / <- T-ENT-060 (FD) : Réseau rempli
- 53: [T-ANT-035] Lot : ANTIGLIO / Systeme : GC / Locaux : * / Statut : a_confirmer / Les clapets coupe-feu (CCF) des schémas 41, 42 et 43 supposent une sectorisation achevée et contrôlée. / RAISONS DES LIENS : / <- T-GET-030 (FD) : Dernier réseau passé : on ne rebouche qu'une fois tous les percements traversés
- 54: [T-GET-080] Lot : GETECH-INFRA / Systeme : TGBT / Locaux : CENT.N-2.01, CENT.N-2.04 / Statut : a_confirmer / JALON MAJEUR. Voir Q-07 : le free-cooling suffit-il à la première mise sous tension, le froid CO2 ne venant qu'ensuite pour la pleine charge ? / RAISONS DES LIENS : / <- T-GET-010 (FD) : Poste MT terminé / <- T-GET-020 (FD) : TGBT terminé / <- T-GE-020 (FD) : Raccordement au réseau extérieur effectif / <- T-HAL-010 (FD) : Ventilation hygiénique et free-cooling du local MT disponibles : c'est ce qui permet la première mise sous tension avant que le froid CO2 ne soit en service
- 55: [T-WET-050] Lot : WETTSTEIN / Systeme : NH3 / Locaux : CENT.N-2.07, CENT.N-2.10 / Statut : a_confirmer / RAISONS DES LIENS : / <- T-WET-020 (FD) : Machines en place et assemblées
- 56: [T-ANS-040] Lot : ANSERMOT / Systeme : MEN / Locaux : CENT.N-2.25, CENT.N-2.26, CENT.N-2.11 / Statut : non_adjuge / RAISONS DES LIENS : / <- T-WET-020 (FD) : Après le dernier colis lourd
- 57: [T-HAL-050] Lot : HALG / Systeme : VENT-SECU / Locaux : CENT.N-1.01, CENT.N-1.02, CENT.N-1.03, CENT.N-1.04, CENT.N-1.06, CENT.N-1.07, CENT.N-2.01, CENT.N-2.03, CENT.N-2.04, CENT.N-2.05, CENT.N-2.07, CENT.N-2.08, CENT.N-2.09, CENT.N-2.10, CENT.N-2.18, CENT.N-2.19, CENT.N-2.21, CENT.N-2.22, CENT.N-2.23 / Statut : a_confirmer / JALON DE SÉCURITÉ : conditionne la charge NH3 et la charge CO2. Aucun fluide frigorigène n'entre dans le bâtiment avant que ce système soit éprouvé. / RAISONS DES LIENS : / <- T-HAL-030 (FD) : Installation terminée / <- T-GET-070 (FD) : Détection NH3 et CO2 raccordée et fonctionnelle / <- T-GET-080 (FD) : Alimentation secourue disponible / <- T-ANT-035 (FD) : Sectorisation coupe-feu achevée : les clapets ne valent que dans une paroi étanche
- 58: [T-CAL-020] Lot : CALORIFUGEAGE / Systeme : HYD-CHAUD / Locaux : CENT.N-1.03, CENT.N-1.04, CENT.N-2.05, CENT.N-2.07, CENT.N-2.09, CENT.N-2.10, CENT.N-2.18, CENT.N-2.19 / Statut : BLOQUE / ALERTE : lot non adjugé et bloquant pour la réception. Porte sur les conduites d'hydraulique chaud, l'accumulateur étant isolé par Bilfinger. / RAISONS DES LIENS : / <- T-ENT-070 (FD) : On n'isole pas une tuyauterie non éprouvée / <- T-GE-040 (FD) : Instrumentation posée avant habillage
- 59: [T-WET-060] Lot : WETTSTEIN / Systeme : NH3 / Locaux : CENT.N-2.07, CENT.N-2.10 / Statut : a_confirmer / L'ammoniac est toxique et inflammable. La ventilation de secours extrait 5'500 m3/h par local PAC en cas de fuite NH3. / RAISONS DES LIENS : / <- T-WET-050 (FD) : Étanchéité prouvée / <- T-HAL-050 (FD) : RÈGLE DE SÉCURITÉ : ventilation de secours et détection NH3 en service avant toute introduction d'ammoniac dans le bâtiment / <- T-GET-080 (FD) : Machines alimentables
- 60: [T-DES-030] Lot : DESPRAZ / Systeme : FROID-CO2 / Locaux : CENT.N-2.05, CENT.N-2.07, CENT.N-2.10 / Statut : a_confirmer / RAISONS DES LIENS : / <- T-DES-017 (FD) : Toutes les soudures terminées : une seule reprise invalide l'épreuve / <- T-ENT-090 (FD) : Circuit complet, armoires de refroidissement raccordées
- 61: [T-DES-040] Lot : DESPRAZ / Systeme : FROID-CO2 / Locaux : CENT.N-2.05, CENT.N-2.07, CENT.N-2.10 / Statut : a_confirmer / RAISONS DES LIENS : / <- T-DES-030 (FD) : Étanchéité prouvée avant mise sous vide
- 62: [T-DES-050] Lot : DESPRAZ / Systeme : FROID-CO2 / Locaux : CENT.N-2.05 / Statut : a_confirmer / Charge par le local d'introduction CO2 N-2.05. / RAISONS DES LIENS : / <- T-DES-040 (FD) : Vide tenu / <- T-HAL-050 (FD) : RÈGLE DE SÉCURITÉ : ventilation de secours et détection CO2 en service avant charge (12'100 m3/h d'extraction par local en cas de fuite) / <- T-GET-080 (FD) : Centrales froid alimentables

| ID | WBS | Task | Duration | Start | Finish | Predecessors | Resources |
| --- | --- | --- | --- | --- | --- | --- | --- |
| 63 | 7 | **P6 - Mise en service et réception** |  | 2027-06-07 | 2027-10-08 |  |  |
| 64 | 7.1 | Mise en service de la ventilation hygiénique et WC | 10d | 2027-06-07 | 2027-06-18 | 23, 24, 54 | HALG |
| 65 | 7.2 | Mise en charge nominale des variateurs | 10d | 2027-06-07 | 2027-06-18 | 54, 26 | EXERGO |
| 66 | 7.3 | Essais de boucles et de régulation | 30d | 2027-06-21 | 2027-07-30 | 44, 54 | GE |
| 67 | 7.4 | Essais fonctionnels intégrés et mise en service des PAC | 40d | 2027-08-02 | 2027-09-24 | 66, 59, 62, 52, 64, 65 | GE |
| 68 | 7.5 | Réception de l'installation | 10d | 2027-09-27 | 2027-10-08 | 67, 50, 58, 56, 57 | GE |

Notes:
- 63: Essais de régulation, essais fonctionnels intégrés, réception.
- 64: [T-HAL-040] Lot : HALG / Systeme : VENT-HYG / Locaux : CENT.N-1.01, CENT.N-1.02, CENT.N-1.03, CENT.N-1.04, CENT.N-1.06, CENT.N-1.07, CENT.N-2.01, CENT.N-2.03, CENT.N-2.04, CENT.N-2.05, CENT.N-2.07, CENT.N-2.08, CENT.N-2.09, CENT.N-2.10, CENT.N-2.18, CENT.N-2.19, CENT.N-2.21, CENT.N-2.22, CENT.N-2.23 / Statut : a_confirmer / RAISONS DES LIENS : / <- T-HAL-010 (FD) : Installation terminée / <- T-HAL-020 (FD) : Installation terminée / <- T-GET-080 (FD) : Alimentation définitive disponible
- 65: [T-GET-090] Lot : EXERGO / Systeme : TGBT / Locaux : CENT.N-2.08 / Statut : a_confirmer / Tableaux variateurs fournis par Wettstein et Exergo (MO, 20.10.2026). / RAISONS DES LIENS : / <- T-GET-080 (FD) : Tension disponible / <- T-ENT-090 (FD) : RÈGLE DURE : les variateurs ne tournent pas en charge sans leur refroidissement (70 kW par local var/com)
- 66: [T-GE-050] Lot : GE / Systeme : MCR / Locaux : * / Statut : a_confirmer / RAISONS DES LIENS : / <- T-GE-040 (FD) : Instrumentation raccordée / <- T-GET-080 (FD) : Alimentation disponible
- 67: [T-GE-060] Lot : GE / Systeme : MCR / Locaux : * / Statut : a_confirmer / Campagne à cinq entreprises simultanées (Wettstein, Despraz, Entretec, Groupe E Tech, Groupe E). À planifier comme une campagne, pas comme une tâche. Pilote à désigner, voir Q-10. / RAISONS DES LIENS : / <- T-GE-050 (FD) : Boucles validées / <- T-WET-060 (FD) : Circuits NH3 chargés / <- T-DES-050 (FD) : Circuit CO2 chargé / <- T-ENT-070 (FD) : Hydraulique éprouvée et remplie / <- T-HAL-040 (FD) : Ventilation en service / <- T-GET-090 (FD) : Variateurs en charge nominale
- 68: [T-REC-010] Lot : GE / Systeme : RECEPTION / Locaux : * / Statut : a_confirmer / RAISONS DES LIENS : / <- T-GE-060 (FD) : Essais fonctionnels concluants / <- T-CAL-010 (FD) : Accumulateur isolé / <- T-CAL-020 (FD) : Tuyauteries calorifugées / <- T-ANS-040 (FD) : Bâtiment refermé / <- T-HAL-050 (FD) : Systèmes de sécurité réceptionnés
